Schedule from MS Project XML.
Illumin360 v3.7 — 8-phase delivery plan + SDLC documentation
Illumin Investments CC

## Resources

| Resource |
| --- |
| Architect — Uriel Tapiwa Munjanga |
| DevOps |
| DBA |
| QA Lead |
| Legal — External Attorney |
| Marketing |
| Security — External |
| Sponsor — CEO Illumin Investments CC |

## Schedule

| ID | WBS | Task | Type | Duration | Predecessors |
| --- | --- | --- | --- | --- | --- |
| 1 | 1 | **0. Pre-build & Authorisation** |  | 0d |  |
| 2 | 1.1 | Kickoff — project authorised | milestone | 0d |  |
| 3 | 1.2 | Merge v3.7 spec amendment + correct typos |  | 3d | 2 |
| 4 | 1.3 | Attorney review — disclaimer pack D-01 to D-12 |  | 15d | 3 |
| 5 | 1.4 | Provision Keycloak, RabbitMQ, PostgreSQL, MinIO, K8s |  | 10d | 3 |
| 6 | 1.5 | Select + integrate payment gateway sandbox |  | 5d | 5 |
| 7 | 1.6 | Build readiness milestone | milestone | 0d | 4, 5, 6 |
| 8 | 2 | **Phase 1 — Core Talent Pool + Auto-Application + Founder** |  | 0d |  |
| 9 | 2.1 | Apply DB migrations 001–015 + v3.7 additions |  | 3d | 7 |
| 10 | 2.2 | Configure Keycloak realms (5 portals) |  | 5d | 9 |
| 11 | 2.3 | Registration flows — Professional / Student / Business |  | 7d | 10 |
| 12 | 2.4 | Founder Programme quota + race-condition serialisation |  | 5d | 11 |
| 13 | 2.5 | Profile management — Professional + Student |  | 8d | 11 |
| 14 | 2.6 | Business profile + recruitment request creation |  | 6d | 13 |
| 15 | 2.7 | Compliance D-03 declaration + D-04 sensitive-filter flow |  | 4d | 14 |
| 16 | 2.8 | Matching engine v1 — two-pass; standard weights |  | 10d | 13 |
| 17 | 2.9 | Auto-Application audit ledger + opt-outs |  | 5d | 16 |
| 18 | 2.10 | Anonymous shortlist preview UI |  | 4d | 16 |
| 19 | 2.11 | Phase 1 test pack — quota race, perf, audit |  | 7d | 12, 17, 18, 15 |
| 20 | 2.12 | Phase 1 sign-off milestone | milestone | 0d | 19 |
| 21 | 3 | **Phase 2 — Reporting, Payments, Notifications, Subscriptions** |  | 0d |  |
| 22 | 3.1 | Payment service — webhook + HMAC + PCI-DSS SAQ A |  | 8d | 20 |
| 23 | 3.2 | Subscription tiers — Professional + Student + Business (4-tier) |  | 7d | 22 |
| 24 | 3.3 | Report generation — PDF + Word + methodology disclosure |  | 8d | 20 |
| 25 | 3.4 | D-02 v3.7 wording in report footer (post-attorney) |  | 2d | 24, 4 |
| 26 | 3.5 | Notification service — email + in-product (52+ triggers) |  | 6d | 22 |
| 27 | 3.6 | Subscription reminder cron + deduplication |  | 3d | 23 |
| 28 | 3.7 | Phase 2 test pack |  | 5d | 25, 26, 27 |
| 29 | 3.8 | Phase 2 sign-off milestone | milestone | 0d | 28 |

| ID | WBS | Task | Type | Duration | Predecessors |
| --- | --- | --- | --- | --- | --- |
| 30 | 4 | **Phase 3 — Privacy, Compliance, Admin** |  | 0d |  |
| 31 | 4.1 | Candidate unlock flow + per-candidate billing |  | 4d | 29 |
| 32 | 4.2 | Privacy controls — D-12 retention purge cron |  | 4d | 29 |
| 33 | 4.3 | Admin Portal — analytics, refund processing |  | 8d | 29 |
| 34 | 4.4 | Audit trail finalisation + immutability tests |  | 4d | 33 |
| 35 | 4.5 | Phase 3 test pack |  | 5d | 31, 32, 34 |
| 36 | 4.6 | Phase 3 sign-off milestone | milestone | 0d | 35 |
| 37 | 5 | **Phase 4 — Internal Recruitment Link** |  | 0d |  |
| 38 | 5.1 | Internal portal — branded URL, token-secured |  | 5d | 36 |
| 39 | 5.2 | Auto-close cron + matching pipeline trigger |  | 4d | 38 |
| 40 | 5.3 | Consolidated invoice — portal + report (NAD 2,300) |  | 3d | 39, 22 |
| 41 | 5.4 | Phase 4 test pack |  | 3d | 40 |
| 42 | 5.5 | Phase 4 sign-off milestone | milestone | 0d | 41 |
| 43 | 6 | **Phase 5 — Student CSR + Social + Support Portal** |  | 0d |  |
| 44 | 6.1 | Student verification (3 methods) + grace + graduate upgrade |  | 6d | 42 |
| 45 | 6.2 | F1 Public profile card + OG + PNG |  | 5d | 44 |
| 46 | 6.3 | F2 Demand feed (anonymised) |  | 3d | 44 |
| 47 | 6.4 | F3 Career Insights blog |  | 4d | 44 |
| 48 | 6.5 | F4 + §26 Badge framework (Verified Student, Compliant Recruiter, Founder) |  | 5d | 44 |
| 49 | 6.6 | F5 Graduate Spotlight (consent-gated) |  | 3d | 45 |
| 50 | 6.7 | F7 Referral programme + reward application |  | 4d | 44 |
| 51 | 6.8 | Support Portal — tickets, KB, identity verification |  | 7d | 44 |
| 52 | 6.9 | Phase 5 test pack |  | 5d | 45, 46, 47, 48, 49, 50, 51 |
| 53 | 6.10 | Phase 5 sign-off milestone | milestone | 0d | 52 |

| ID | WBS | Task | Type | Duration | Predecessors |
| --- | --- | --- | --- | --- | --- |
| 54 | 7 | **Phase 6 — AI Evolution + Assets + PWA + Assistant** |  | 0d |  |
| 55 | 7.1 | Adaptive weighting (custom_weights, sum-to-100, locked) |  | 5d | 53 |
| 56 | 7.2 | Gap Analysis — 70–85% band sub-blocks (no AI in headings) |  | 4d | 55 |
| 57 | 7.3 | RLHF data collection — match_feedback + day-14 prompt |  | 5d | 55 |
| 58 | 7.4 | Asset management — logos + photo blind-screening |  | 5d | 53 |
| 59 | 7.5 | PWA — manifest, service worker, offline, install |  | 4d | 53 |
| 60 | 7.6 | AI Platform Assistant — 5 instances + post-gen filter |  | 8d | 55 |
| 61 | 7.7 | Workforce Benchmarking Report (Business) |  | 5d | 55 |
| 62 | 7.8 | F6 Employer reviews (moderated, ≥5 ratings) |  | 4d | 53 |
| 63 | 7.9 | Phase 6 test pack — assistant identity, blind-screen, adaptive bounds |  | 6d | 56, 57, 58, 59, 60, 61, 62 |
| 64 | 7.10 | Phase 6 sign-off milestone | milestone | 0d | 63 |
| 65 | 8 | **Phase 7 — Video Integration (Premium)** |  | 0d |  |
| 66 | 8.1 | Video upload — 60s, 150 MB, virus scan |  | 4d | 64 |
| 67 | 8.2 | Transcription provider integration |  | 5d | 66 |
| 68 | 8.3 | Keyword extraction at 30% weight cap |  | 3d | 67 |
| 69 | 8.4 | Content moderation queue |  | 3d | 66 |
| 70 | 8.5 | Phase 7 test pack |  | 3d | 68, 69 |
| 71 | 8.6 | Phase 7 sign-off milestone | milestone | 0d | 70 |
| 72 | 9 | **Phase 8 — RLHF Refinement + Marketplace (Future)** |  | 0d |  |
| 73 | 9.1 | Wait for 500 feedback records per scoring model |  | 30d | 71 |
| 74 | 9.2 | Model weight refinement |  | 15d | 73 |
| 75 | 9.3 | Marketplace expansion (scope TBD) |  | 30d | 74 |
| 76 | 9.4 | Phase 8 sign-off milestone | milestone | 0d | 75 |
| 77 | 10 | **SDLC Documentation (parallel, v2.0 population)** |  | 0d |  |
| 78 | 10.1 | Batches 1+2+3 populated — 53 docs | milestone | 0d | 2 |
| 79 | 10.2 | Batch 4 — folders 04, 05, 06, 10 |  | 10d | 20 |
| 80 | 10.3 | Batch 5 — folders 07, 08 test plans |  | 10d | 29 |
| 81 | 10.4 | Batch 6 — folders 11, 12 user manuals |  | 8d | 36 |
| 82 | 10.5 | All 134 SDLC docs at v2.0 baseline | milestone | 0d | 79, 80, 81 |

| ID | WBS | Task | Type | Duration | Predecessors |
| --- | --- | --- | --- | --- | --- |
| 83 | 11 | **Pre-launch and Go-Live** |  | 0d |  |
| 84 | 11.1 | External penetration test |  | 10d | 64 |
| 85 | 11.2 | UAT — Founder cohort |  | 10d | 64 |
| 86 | 11.3 | Final attorney sign-off on disclaimer pack |  | 5d | 4, 82 |
| 87 | 11.4 | PRODUCTION GO-LIVE | milestone | 0d | 84, 85, 86 |
